# JiJiangPlan

Schedule from MS Project, 2017-02-07 to 2017-11-06, A marks actual dates.
Hewlett Packard

## Calendars

- Standard: Mon-Fri 08:00-12:00, 13:00-17:00; Sat-Sun off.

## Resources

| Resource | Group |
| --- | --- |
| HuBingLei | Dev |
| ZhouYong | Dev |
| ZhaoYi | Dev |
| LuHuang | Biz |

## Schedule

| ID | WBS | Task | Type | Duration | Start | Finish | Predecessors | Complete | Remaining | Total slack | Free slack | Constraint | Resources | Work | Actual work | comments |
| --- | --- | --- | --- | --- | --- | --- | --- | --- | --- | --- | --- | --- | --- | --- | --- | --- |
| 1 | 1 | **开发管理** |  | 34d? | 2017-02-07 A | 2017-03-24 A |  | 100% |  |  |  |  |  | 264h | 264h |  |
| 2 | 1.1 | 前端项目结构 |  | 23d | 2017-02-21 A | 2017-03-23 A |  | 100% |  |  |  | start no earlier than 2017-02-21 | HuBingLei | 184h | 184h |  |
| 3 | 1.2 | Jenkins Build |  | 3d | 2017-02-07 A | 2017-02-09 A |  | 100% |  |  |  |  | HuBingLei | 24h | 24h |  |
| 4 | 1.3 | 后台框架结构 |  | 5d | 2017-02-13 A | 2017-02-17 A |  | 100% |  |  |  | start no earlier than 2017-02-13 | ZhaoYi | 40h | 40h |  |
| 5 | 1.4 | API 定义 |  | 1d? | 2017-03-24 A | 2017-03-24 A | 2 | 100% |  |  |  |  | HuBingLei; ZhouYong | 16h | 16h |  |
| 6 | 2 | **主站开发** |  | 89d | 2017-04-26 A | 2017-08-28 |  | 9% | 80.91d | -43d | 0d |  |  | 704h | 64h |  |
| 7 | 2.1 | Mock Site Page |  | 8d | 2017-04-26 A | 2017-05-12 A | 5 | 100% |  |  |  | finish no earlier than 2017-05-12 | HuBingLei | 64h | 64h |  |
| 8 | 2.2 | React Component |  | 40d | 2017-05-09 | 2017-07-03 |  |  |  | -43d | 0d | start no earlier than 2017-05-09 | ZhouYong | 320h |  |  |
| 9 | 2.3 | 后台实现 |  | 20d | 2017-07-04 | 2017-07-31 | 8 |  |  | -43d | 0d |  | ZhaoYi | 160h |  |  |
| 10 | 2.4 | 前台界面开发 |  | 20d | 2017-08-01 | 2017-08-28 | 9 |  |  | -43d | 0d |  | ZhaoYi | 160h |  |  |
| 11 | 3 | **论坛开发** |  | 106d | 2017-05-15 A | 2017-10-09 |  | 20% | 84.32d | 15d |  |  |  | 880h | 180h |  |
| 12 | 3.1 | Mock Forum Page |  | 30d | 2017-05-15 A | 2017-06-23 | 7 | 75% | 7.5d | 76d | 0d |  | HuBingLei | 240h | 180h |  |
| 13 | 3.2 | React Component |  | 20d | 2017-07-04 | 2017-07-31 | 8 |  |  | 35d | 0d |  | ZhouYong | 160h |  |  |
| 14 | 3.3 | 后台实现 |  | 30d | 2017-08-29 | 2017-10-09 | 10 |  |  | -43d | 0d |  | ZhaoYi | 240h |  |  |
| 15 | 3.4 | 前台界面 |  | 30d | 2017-08-01 | 2017-09-11 | 13 |  |  | 35d | 0d |  | ZhouYong | 240h |  |  |
| 16 | 4 | **认证统计** |  | 125.75d | 2017-05-15 A | 2017-11-06 |  | 5% | 120.03d | 0d |  |  |  | 440h | 20h |  |
| 17 | 4.1 | Mock Admin Page | milestone | 0d | 2017-05-15 A | 2017-05-15 A | 11, 13 | 100% |  |  |  |  | HuBingLei |  |  |  |
| 18 | 4.2 | React Component |  | 20d | 2017-06-26 | 2017-07-21 | 12, 17 |  |  | 76d |  |  | HuBingLei | 160h |  |  |
| 19 | 4.3 | 前台界面 |  | 5d | 2017-09-12 | 2017-09-18 | 15 |  |  | 35d |  |  | ZhouYong | 40h |  |  |
| 20 | 4.4 | 后台实现 |  | 15d | 2017-10-10 | 2017-10-30 | 14 |  |  | -43d | 0d |  | ZhaoYi | 120h |  |  |
| 21 | 4.5 | **集成功能整合** |  | 48d | 2017-08-31 A | 2017-11-06 | 20 | 17% | 40d | 0d |  |  |  | 120h | 20h |  |
| 22 | 4.5.1 | 支付宝 |  | 5d | 2017-10-31 | 2017-11-06 |  |  |  | 0d |  |  | ZhouYong | 40h |  | change when required |
| 23 | 4.5.2 | 微信 |  | 5d | 2017-08-31 A | 2017-11-02 |  | 50% | 2.5d | 2.5d |  |  | ZhaoYi | 40h | 20h | change when required |
| 24 | 4.5.3 | 阿里大鱼 |  | 5d | 2017-10-31 | 2017-11-06 |  |  |  | 0d |  |  | HuBingLei | 40h |  | change when required |
